Schedule from MS Project, 2025-03-04 to 2025-03-25, costs in €, A marks actual dates.

## Calendars

- Standard: Mon-Fri 08:00-12:00, 13:00-17:00; Sat-Sun off.

## Resources

| Resource | Rate |
| --- | --- |
| Arendaja Artjom | 30 |
| Arendaja Artur | 30 |
| UI/UX Disainer Kauri | 25 |
| Graafiline disainer Tauri | 25 |
| Helidisainer Markus | 25 |
| Tarkvara litsents |  |
| Riistvara |  |
| QA Testija | 20 |
| Testijad |  |
| Projektijuht | 30 |
| Analüütik | 20 |

## Schedule

| ID | WBS | Task | Type | Duration | Start | Finish | Predecessors | Complete | Remaining | Resources | Work | Actual work | Cost | Actual cost |
| --- | --- | --- | --- | --- | --- | --- | --- | --- | --- | --- | --- | --- | --- | --- |
| 1 | 1 | **Tööülesannete loetelu** |  | 16d? | 2025-03-04 08:00 A | 2025-03-25 17:00 |  | 22% | 12.44d? | Tarkvara litsents [0.1%]; Riistvara [0.1%] | 164h | 36h | 6,700 | 1,000 |
| 2 | 1.1 | **Projekti planeerimine** |  | 1d | 2025-03-04 08:00 A | 2025-03-04 17:00 A |  | 100% |  |  | 8h | 8h | 240 | 240 |
| 3 | 1.1.1 | Eesmärkide seadmne | manual | 0.25d | 2025-03-04 08:00 A | 2025-03-04 10:00 A |  | 100% |  | Projektijuht | 2h | 2h | 60 | 60 |
| 4 | 1.1.2 | Ressursside ja ajakava määramine | manual | 0.25d | 2025-03-04 10:00 A | 2025-03-04 12:00 A | 3 | 100% |  | Projektijuht | 2h | 2h | 60 | 60 |
| 5 | 1.1.3 | Riskianalüüs | manual | 0.5d | 2025-03-04 12:00 A | 2025-03-04 17:00 A | 4 | 100% |  | Projektijuht | 4h | 4h | 120 | 120 |
| 6 | 1.2 | **Meeskonna moodustamine** |  | 1d | 2025-03-05 08:00 A | 2025-03-05 17:00 A |  | 100% |  |  | 8h | 8h | 240 | 240 |
| 7 | 1.2.1 | Rollide ja vastutuste jaotamine | manual | 0.5d | 2025-03-05 08:00 A | 2025-03-05 12:00 A | 5 | 100% |  | Projektijuht | 4h | 4h | 120 | 120 |
| 8 | 1.2.2 | Kommunikatsioonikanalite määramine | manual | 0.5d | 2025-03-05 12:00 A | 2025-03-05 17:00 A | 7 | 100% |  | Projektijuht | 4h | 4h | 120 | 120 |
| 9 | 1.3 | **Nõuete kogumine** |  | 1d | 2025-03-06 08:00 A | 2025-03-06 17:00 A |  | 100% |  |  | 12h | 12h | 280 | 280 |
| 10 | 1.3.1 | Funktsionaalsete nõuete määratlemine | manual | 0.25d | 2025-03-06 08:00 A | 2025-03-06 10:00 A | 8 | 100% |  | Analüütik | 2h | 2h | 40 | 40 |
| 11 | 1.3.2 | Mittefunktsionaalsete nõuete määratlemine | manual | 0.25d | 2025-03-06 10:00 A | 2025-03-06 12:00 A | 10 | 100% |  | Analüütik | 2h | 2h | 40 | 40 |
| 12 | 1.3.3 | Nõuete kinnitamine tellijaga | manual | 0.5d | 2025-03-06 12:00 A | 2025-03-06 17:00 A | 11 | 100% |  | Analüütik; Projektijuht | 8h | 8h | 200 | 200 |
| 13 | 1.4 | **Arhitektuuri disain** |  | 1d | 2025-03-07 08:00 A | 2025-03-07 17:00 A |  | 100% |  |  | 8h | 8h | 240 | 240 |
| 14 | 1.4.1 | Süsteemi arhitektuuri kavandamine | manual | 0.25d | 2025-03-07 08:00 A | 2025-03-07 10:00 A |  | 100% |  | Arendaja Artjom | 2h | 2h | 60 | 60 |
| 15 | 1.4.2 | Andmebaasi struktuuri loomine | manual | 0.25d | 2025-03-07 10:00 A | 2025-03-07 12:00 A | 14 | 100% |  | Arendaja Artur | 2h | 2h | 60 | 60 |
| 16 | 1.4.3 | Tabelite määratlemine | manual | 0.25d | 2025-03-07 12:00 A | 2025-03-07 15:00 A | 15 | 100% |  | Arendaja Artjom | 2h | 2h | 60 | 60 |
| 17 | 1.4.4 | Suhete loomine tabelite vahel | manual | 0.25d | 2025-03-07 15:00 A | 2025-03-07 17:00 A | 16 | 100% |  | Arendaja Artur | 2h | 2h | 60 | 60 |
| 18 | 1.5 | **Kasutajaliidese disain** |  | 2d | 2025-03-08 08:00 | 2025-03-09 17:00 |  |  |  |  | 16h |  | 400 |  |
| 19 | 1.5.1 | Kasutajaliidese prototüüpide loomine | manual | 0.5d | 2025-03-08 08:00 | 2025-03-08 13:00 | 17 |  |  | UI/UX Disainer Kauri | 4h |  | 100 |  |
| 20 | 1.5.2 | Kasutajakogemuse testimine | manual | 0.5d | 2025-03-08 13:00 | 2025-03-08 17:00 | 19 |  |  | UI/UX Disainer Kauri | 4h |  | 100 |  |
| 21 | 1.5.3 | Testgrupi moodustamine | manual | 0.5d | 2025-03-09 08:00 | 2025-03-09 13:00 | 20 |  |  | UI/UX Disainer Kauri | 4h |  | 100 |  |
| 22 | 1.5.4 | Tagasiside kogumine ja analüüs | manual | 0.5d | 2025-03-09 13:00 | 2025-03-09 17:00 | 21 |  |  | UI/UX Disainer Kauri | 4h |  | 100 |  |
| 23 | 1.6 | **Mängumehaanika arendus** |  | 2d | 2025-03-10 08:00 | 2025-03-11 17:00 |  |  |  |  | 16h |  | 480 |  |
| 24 | 1.6.1 | Mänguloogika testimine | manual | 2d | 2025-03-10 08:00 | 2025-03-11 17:00 | 22 |  |  | Arendaja Artur | 16h |  | 480 |  |

| ID | WBS | Task | Type | Duration | Start | Finish | Predecessors | Resources | Work | Cost |
| --- | --- | --- | --- | --- | --- | --- | --- | --- | --- | --- |
| 25 | 1.7 | **Graafika ja heli integreerimine** |  | 4d | 2025-03-12 08:00 | 2025-03-17 17:00 |  |  | 32h | 800 |
| 26 | 1.7.1 | Graafiliste elementide loomine ja lisamine | manual | 2d | 2025-03-12 08:00 | 2025-03-13 17:00 | 24 | Graafiline disainer Tauri | 16h | 400 |
| 27 | 1.7.2 | Heliefektide ja taustamuusika integreerimine | manual | 2d | 2025-03-14 08:00 | 2025-03-17 17:00 | 26 | Helidisainer Markus | 16h | 400 |
| 28 | 1.8 | **Testimine** |  | 1d | 2025-03-18 08:00 | 2025-03-18 17:00 |  |  | 16h | 160 |
| 29 | 1.8.1 | Testide läbiviimine ja tulemuste analüüs | manual | 1d | 2025-03-18 08:00 | 2025-03-18 17:00 | 27 | QA Testija; Testijad | 16h | 160 |
| 30 | 1.9 | **Vigade parandus** |  | 2d | 2025-03-19 08:00 | 2025-03-20 17:00 |  |  | 24h | 640 |
| 31 | 1.9.1 | Leitud vigade dokumenteerimine | manual | 1d | 2025-03-19 08:00 | 2025-03-19 17:00 | 29 | QA Testija | 8h | 160 |
| 32 | 1.9.2 | Vigade parandamine ja uuesti testimine | manual | 1d | 2025-03-20 08:00 | 2025-03-20 17:00 | 31 | Arendaja Artjom; Arendaja Artur; Riistvara [0.1%]; Tarkvara litsents [0.1%] | 16h | 480 |
| 33 | 1.10 | **Lõplik ülevaatus ja dokumentatsioon** |  | 3d? | 2025-03-21 08:00 | 2025-03-25 17:00 |  |  | 24h | 720 |
| 34 | 1.10.1 | Kasutusjuhendi koostamine | manual | 1d | 2025-03-21 08:00 | 2025-03-21 17:00 | 32 | Projektijuht | 8h | 240 |
| 35 | 1.10.2 | Lõpliku versiooni esitamine tellijale | manual | 1d | 2025-03-24 08:00 | 2025-03-24 17:00 | 34 | Projektijuht | 8h | 240 |
| 36 | 1.10.3 | Põhifunktsioonide implementeerimine | manual | 1d | 2025-03-25 08:00 | 2025-03-25 17:00 | 35 | Arendaja Artjom; Riistvara [0.1%]; Tarkvara litsents [0.1%] | 8h | 240 |
